# 水务智慧闸站软件平台

How a schedule from a web Gantt chart changed from version to version. A marks actual dates.

## Version 1 (saved 2024-05-23)

| ID | WBS | Task | Duration | Start | Finish | Predecessors | Complete |
| --- | --- | --- | --- | --- | --- | --- | --- |
| 2 |  | 数据库设计 | 10d | 2024-04-15 | 2024-04-26 |  | 100% |
| 3 | 2 | **系统管理** | 15d | 2024-04-29 | 2024-05-17 | 2 | 100% |
| 4 |  | 用户模块 | 10d | 2024-04-29 | 2024-05-10 |  | 100% |
| 5 |  | 权限模块 | 5d | 2024-05-13 | 2024-05-17 | 4 | 100% |
| 6 |  | 部门模块 | 5d | 2024-05-13 | 2024-05-17 | 4 | 100% |
| 7 |  | 区划模块 | 5d | 2024-05-13 | 2024-05-17 | 4 | 100% |
| 8 |  | 日志模块 | 5d | 2024-05-13 | 2024-05-17 | 4 | 100% |
| 9 | 3 | **相机管理** | 15d | 2024-05-20 | 2024-06-07 | 3 |  |
| 10 |  | 海康相机协议对接（报警、事件、视频） | 15d | 2024-05-20 | 2024-06-07 |  |  |
| 11 |  | 基础信息模块 | 5d | 2024-05-20 | 2024-05-24 |  |  |
| 12 | 4 | **设备管理** | 15d | 2024-06-10 | 2024-06-28 | 9 |  |
| 13 |  | 基础信息模块 | 10d | 2024-06-10 | 2024-06-21 |  |  |
| 14 |  | 设备数据模块 | 15d | 2024-06-10 | 2024-06-28 |  |  |
| 15 | 5 | **数据采集服务** | 15d | 2024-07-01 | 2024-07-19 | 12 |  |
| 16 |  | 设备协议对接 | 15d | 2024-07-01 | 2024-07-19 |  |  |
| 17 |  | 数据解析、存储 | 10d | 2024-07-01 | 2024-07-12 |  |  |
| 18 |  | 水文信息数据对接 | 10d | 2024-07-01 | 2024-07-12 |  |  |
| 19 |  | GIS 一张图 | 8d | 2024-07-22 | 2024-07-31 | 15 |  |
| 20 | 7 | **统计分析** | 5d | 2024-08-01 | 2024-08-07 | 19 |  |
| 21 |  | 水位数据分析 | 5d | 2024-08-01 | 2024-08-07 |  |  |
| 22 |  | 闸门开关数据分析 | 5d | 2024-08-01 | 2024-08-07 |  |  |
| 23 |  | 水泵开关数据分析 | 5d | 2024-08-01 | 2024-08-07 |  |  |
| 24 | 8 | **巡检管理** | 20d | 2024-08-08 | 2024-09-04 | 20 |  |
| 25 |  | 手持终端开发 | 20d | 2024-08-08 | 2024-09-04 |  |  |
| 26 |  | 巡检记录 | 10d | 2024-08-08 | 2024-08-21 |  |  |
| 27 |  | 数据大屏 | 15d | 2024-09-05 | 2024-09-25 | 24 |  |
| 28 |  | 自控软件程序编制 | 90d | 2024-06-10 | 2024-10-11 |  |  |
| 29 |  | 闸门远程测控功能 | 45d | 2024-06-24 | 2024-08-23 |  |  |
| 30 |  | 整体功能测试 | 20d | 2024-10-14 | 2024-11-08 | 28 |  |

## Version 2 (saved 2024-05-30)

Last finish stays 2024-11-08.

Changed:

| ID | Task | Complete |
| --- | --- | --- |
| 9 | **相机管理** | 0% → 45% |
| 10 | 海康相机协议对接（报警、事件、视频） | 0% → 60% |

## Version 3 (saved 2024-06-07)

Last finish stays 2024-11-08. Complete tasks 6 → 8.

Changed:

| ID | Task | Complete |
| --- | --- | --- |
| 9 | **相机管理** | 45% → 100% |
| 10 | 海康相机协议对接（报警、事件、视频） | 60% → 100% |
| 11 | 基础信息模块 | 0% → 100% |
